Schedule from MS Project XML, 2014-03-01 to 2015-12-01.

## Calendars

- 标准1: Mon-Fri 08:00-12:00, 13:00-17:00; Sat-Sun off. Exceptions (off unless hours are given): 2014-03-01 to 2015-02-11 08:00-12:00, 13:00-17:00, 2015-02-12 to 2015-03-06, 2015-03-07 to 2015-12-05 08:00-12:00, 13:00-17:00.

## Schedule

| ID | WBS | Task | Duration | Start | Finish | Predecessors | Total slack | Free slack | Constraint | Work |
| --- | --- | --- | --- | --- | --- | --- | --- | --- | --- | --- |
| 1 | 1 | **西安高新创汇社区E区二区建安工程总进度计划** | 618d | 2014-03-01 | 2015-12-01 |  | 0d |  |  | 240h |
| 2 | 1.1 | **正负零以下结构工程** | 229d | 2014-03-01 | 2014-10-15 |  | 0d |  |  |  |
| 3 | 1.1.1 | **一施工段** | 80d | 2014-03-01 | 2014-05-19 |  | 0d |  |  |  |
| 4 | 1.1.1.1 | 施工准备 | 3d | 2014-03-01 | 2014-03-03 |  | 0d |  | start no earlier than 2014-03-01 |  |
| 5 | 1.1.1.2 | 测量放线 | 2d | 2014-03-04 | 2014-03-05 | 4 | 0d |  |  |  |
| 6 | 1.1.1.3 | 3、7#楼基础筏板以下结构工程 | 60d | 2014-03-06 | 2014-05-04 | 5 | 0d |  |  |  |
| 7 | 1.1.1.4 | 3、7#楼负一层结构工程 | 15d | 2014-05-05 | 2014-05-19 | 6 | 0d |  |  |  |
| 8 | 1.1.2 | **二施工段** | 80d | 2014-03-31 | 2014-06-18 |  | 6d |  |  |  |
| 9 | 1.1.2.1 | 施工准备 | 3d | 2014-03-31 | 2014-04-02 | 4SS+30d | 6d | 0d |  |  |
| 10 | 1.1.2.2 | 测量放线 | 2d | 2014-04-03 | 2014-04-04 | 9 | 6d | 0d |  |  |
| 11 | 1.1.2.3 | 11#楼基础筏板以下结构工程 | 60d | 2014-04-05 | 2014-06-03 | 10 | 6d | 0d |  |  |
| 12 | 1.1.2.4 | 11#楼负一层结构工程 | 15d | 2014-06-04 | 2014-06-18 | 11 | 6d | 0d |  |  |
| 13 | 1.1.3 | **三施工段** | 25d | 2014-03-01 | 2014-03-25 |  | 300d |  |  |  |
| 14 | 1.1.3.1 | 施工准备 | 3d | 2014-03-01 | 2014-03-03 | 4SS | 300d | 0d |  |  |
| 15 | 1.1.3.2 | 测量放线 | 2d | 2014-03-04 | 2014-03-05 | 14 | 300d | 0d |  |  |
| 16 | 1.1.3.3 | 41#楼基础结构工程 | 20d | 2014-03-06 | 2014-03-25 | 15 | 300d | 0d |  |  |
| 17 | 1.1.4 | **四施工段** | 215d | 2014-03-15 | 2014-10-15 |  | 146d |  |  |  |
| 18 | 1.1.4.1 | 施工准备 | 3d | 2014-03-15 | 2014-03-17 | 4FS+11d | 146d | 0d |  |  |
| 19 | 1.1.4.2 | 测量放线 | 2d | 2014-03-18 | 2014-03-19 | 18 | 146d | 0d |  |  |
| 20 | 1.1.4.3 | 地下车库基础筏板以下结构工程 | 120d | 2014-03-20 | 2014-07-17 | 19 | 146d | 0d |  |  |
| 21 | 1.1.4.4 | 地下车库框柱、梁、板、梯结构工程 | 90d | 2014-07-18 | 2014-10-15 | 20 | 146d | 0d |  |  |
| 22 | 1.2 | **主体结构工程** | 397d | 2014-03-26 | 2015-05-19 |  | 55d |  |  |  |
| 23 | 1.2.1 | **一施工段（3、7#楼）** | 270d | 2014-05-20 | 2015-03-08 |  | 0d |  |  |  |
| 24 | 1.2.1.1 | 一至五层主体结构工程 | 36d | 2014-05-20 | 2014-06-24 | 7 | 0d |  |  |  |
| 25 | 1.2.1.2 | 六至十层主体结构工程 | 36d | 2014-06-25 | 2014-07-30 | 24 | 0d |  |  |  |
| 26 | 1.2.1.3 | 十一层至十五层主体结构工程 | 36d | 2014-07-31 | 2014-09-04 | 25 | 0d |  |  |  |
| 27 | 1.2.1.4 | 十六层至二十层主体结构工程 | 36d | 2014-09-05 | 2014-10-10 | 26 | 0d |  |  |  |
| 28 | 1.2.1.5 | 二十一层至二十五层主体结构工程 | 36d | 2014-10-11 | 2014-11-15 | 27 | 0d |  |  |  |
| 29 | 1.2.1.6 | 二十六层至三十二层主体结构工程 | 42d | 2014-11-16 | 2014-12-27 | 28 | 263d | 0d |  |  |
| 30 | 1.2.1.7 | 屋面结构施工 | 20d | 2014-12-28 | 2015-01-16 | 29 | 288d |  |  |  |
| 31 | 1.2.1.8 | 负一层砌体工程 | 15d | 2014-09-08 | 2014-09-22 | 27SS+3d | 404d |  |  |  |
| 32 | 1.2.1.9 | 一至五层主体填充墙工程 | 20d | 2014-09-24 | 2014-10-13 | 28SF+3d | 383d |  |  |  |
| 33 | 1.2.1.10 | 六至十层主体填充墙工程 | 20d | 2014-10-14 | 2014-11-02 | 28SF+23d | 0d |  |  |  |
| 34 | 1.2.1.11 | 十一层至十五层主体填充墙工程 | 20d | 2014-11-03 | 2014-11-22 | 33 | 0d |  |  |  |
| 35 | 1.2.1.12 | 十六至二十层主体填充墙工程 | 20d | 2014-11-23 | 2014-12-12 | 34 | 0d |  |  |  |
| 36 | 1.2.1.13 | 二十一至二十五层主体填充墙工程 | 20d | 2014-12-13 | 2015-01-01 | 35 | 0d |  |  |  |
| 37 | 1.2.1.14 | 二十六至三十二层主体填充墙工程 | 25d | 2015-01-02 | 2015-01-26 | 36 | 0d |  |  |  |
| 38 | 1.2.1.15 | 烟气道安装 | 18d | 2015-01-27 | 2015-03-08 | 37 | 260d |  |  |  |

| ID | WBS | Task | Duration | Start | Finish | Predecessors | Total slack | Free slack |
| --- | --- | --- | --- | --- | --- | --- | --- | --- |
| 39 | 1.2.2 | **二施工段（11#楼）** | 312d | 2014-06-19 | 2015-05-19 |  | 6d |  |
| 40 | 1.2.2.1 | 一至五层主体结构工程 | 50d | 2014-06-19 | 2014-08-07 | 12 | 6d | 0d |
| 41 | 1.2.2.2 | 六至十层主体结构工程 | 36d | 2014-08-08 | 2014-09-12 | 40 | 6d | 0d |
| 42 | 1.2.2.3 | 十一层至十五层主体结构工程 | 36d | 2014-09-13 | 2014-10-18 | 41 | 6d | 0d |
| 43 | 1.2.2.4 | 十六层至二十层主体结构工程 | 36d | 2014-10-19 | 2014-11-23 | 42 | 6d | 0d |
| 44 | 1.2.2.5 | 二十一层至二十六层主体结构工程 | 36d | 2014-11-24 | 2014-12-29 | 43 | 6d | 0d |
| 45 | 1.2.2.6 | 屋面结构施工 | 20d | 2014-12-30 | 2015-01-18 | 44 | 20d | 0d |
| 46 | 1.2.2.7 | 负一层砌体工程 | 15d | 2014-12-14 | 2014-12-28 | 43FS+20d | 307d |  |
| 47 | 1.2.2.8 | 一至五层主体填充墙工程 | 20d | 2014-12-30 | 2015-01-18 | 44 | 6d | 0d |
| 48 | 1.2.2.9 | 六至十层主体填充墙工程 | 20d | 2015-01-19 | 2015-02-07 | 47 | 6d | 0d |
| 49 | 1.2.2.10 | 十一层至十五层主体填充墙工程 | 20d | 2015-02-08 | 2015-03-22 | 48 | 6d | 0d |
| 50 | 1.2.2.11 | 十六至二十层主体填充墙工程 | 20d | 2015-03-23 | 2015-04-11 | 49 | 6d | 0d |
| 51 | 1.2.2.12 | 二十一至二十六层主体填充墙工程 | 20d | 2015-04-12 | 2015-05-01 | 50 | 6d | 0d |
| 52 | 1.2.2.13 | 烟气道安装 | 18d | 2015-05-02 | 2015-05-19 | 51 | 188d |  |
| 53 | 1.2.3 | **三施工段（41#楼工程）** | 100d | 2014-03-26 | 2014-07-03 |  | 300d |  |
| 54 | 1.2.3.1 | 一层主体结构工程 | 20d | 2014-03-26 | 2014-04-14 | 16 | 300d | 0d |
| 55 | 1.2.3.2 | 二层主体结构工程 | 10d | 2014-04-15 | 2014-04-24 | 54 | 300d | 0d |
| 56 | 1.2.3.3 | 三层主体结构工程 | 10d | 2014-04-25 | 2014-05-04 | 55 | 300d | 0d |
| 57 | 1.2.3.4 | 屋面结构施工 | 20d | 2014-05-05 | 2014-05-24 | 56 | 525d |  |
| 58 | 1.2.3.5 | 一层主体填充墙工程 | 18d | 2014-05-15 | 2014-06-01 | 56FS+10d | 300d | 0d |
| 59 | 1.2.3.6 | 二层主体填充墙工程 | 16d | 2014-06-02 | 2014-06-17 | 58 | 300d | 0d |
| 60 | 1.2.3.7 | 三层主体填充墙工程 | 16d | 2014-06-18 | 2014-07-03 | 59 | 300d | 0d |
| 61 | 1.2.4 | **四施工段（地下车库工程）** | 45d | 2014-10-16 | 2014-11-29 |  | 241d |  |
| 62 | 1.2.4.1 | 地下车库填充墙工程 | 45d | 2014-10-16 | 2014-11-29 | 21 | 246d | 0d |

| ID | WBS | Task | Duration | Start | Finish | Predecessors | Total slack | Free slack |
| --- | --- | --- | --- | --- | --- | --- | --- | --- |
| 63 | 1.3 | **屋面工程** | 339d | 2014-07-04 | 2015-06-30 |  | 146d |  |
| 64 | 1.3.1 | **一施工段（3、7#楼）** | 60d | 2015-01-27 | 2015-04-19 |  | 104d |  |
| 65 | 1.3.1.1 | 屋面找坡层 | 10d | 2015-01-27 | 2015-02-05 | 37 | 104d | 0d |
| 66 | 1.3.1.2 | 屋面保温层 | 5d | 2015-02-06 | 2015-02-10 | 65 | 104d | 0d |
| 67 | 1.3.1.3 | 屋面找平层 | 10d | 2015-02-11 | 2015-03-15 | 66 | 104d | 0d |
| 68 | 1.3.1.4 | 屋面防水层 | 10d | 2015-03-16 | 2015-03-25 | 67 | 104d | 0d |
| 69 | 1.3.1.5 | 屋面防水保护层 | 10d | 2015-03-26 | 2015-04-04 | 68 | 104d | 0d |
| 70 | 1.3.1.6 | 屋面砖工程 | 15d | 2015-04-05 | 2015-04-19 | 69 | 104d | 0d |
| 71 | 1.3.2 | **二施工段（11#楼）** | 61d | 2015-04-12 | 2015-06-11 |  | 20d |  |
| 72 | 1.3.2.1 | 屋面找坡层 | 10d | 2015-04-12 | 2015-04-21 | 45FS+60d | 20d | 0d |
| 73 | 1.3.2.2 | 屋面保温层 | 5d | 2015-04-22 | 2015-04-26 | 72 | 20d | 0d |
| 74 | 1.3.2.3 | 屋面找平层 | 10d | 2015-04-27 | 2015-05-06 | 73 | 20d | 0d |
| 75 | 1.3.2.4 | 屋面防水层 | 10d | 2015-05-07 | 2015-05-16 | 74 | 20d | 0d |
| 76 | 1.3.2.5 | 屋面防水保护层 | 10d | 2015-05-17 | 2015-05-26 | 75 | 20d | 0d |
| 77 | 1.3.2.6 | 屋面砖工程 | 16d | 2015-05-27 | 2015-06-11 | 76 | 20d | 0d |
| 78 | 1.3.3 | **三施工段（41#楼工程）** | 70d | 2014-07-04 | 2014-09-11 |  | 415d |  |
| 79 | 1.3.3.1 | 屋面找坡层 | 15d | 2014-07-04 | 2014-07-18 | 60 | 415d | 0d |
| 80 | 1.3.3.2 | 屋面保温层 | 5d | 2014-07-19 | 2014-07-23 | 79 | 415d | 0d |
| 81 | 1.3.3.3 | 屋面找平层 | 20d | 2014-07-24 | 2014-08-12 | 80 | 415d | 0d |
| 82 | 1.3.3.4 | 屋面防水层 | 10d | 2014-08-13 | 2014-08-22 | 81 | 415d | 0d |
| 83 | 1.3.3.5 | 屋面防水保护层 | 20d | 2014-08-23 | 2014-09-11 | 82 | 415d |  |
| 84 | 1.3.4 | **四施工段（部分地下车库工程）** | 205d | 2014-11-15 | 2015-06-30 |  | 146d |  |
| 85 | 1.3.4.1 | 车库顶找坡层 | 45d | 2014-11-15 | 2014-12-29 | 21FS+30d | 146d | 0d |
| 86 | 1.3.4.2 | 车库顶砂浆找平层 | 30d | 2014-12-30 | 2015-01-28 | 85 | 146d | 0d |
| 87 | 1.3.4.3 | 车库外部防水层 | 20d | 2015-01-29 | 2015-03-12 | 86 | 146d | 0d |
| 88 | 1.3.4.4 | 车库外部防水保护层 | 30d | 2015-03-13 | 2015-04-11 | 87 | 146d | 0d |
| 89 | 1.3.4.5 | 车库顶塑料板排水层 | 20d | 2015-04-12 | 2015-05-01 | 88 | 146d | 0d |
| 90 | 1.3.4.6 | 车库外部土方回填 | 60d | 2015-05-02 | 2015-06-30 | 89 | 146d |  |

| ID | WBS | Task | Duration | Start | Finish | Predecessors | Total slack | Free slack |
| --- | --- | --- | --- | --- | --- | --- | --- | --- |
| 91 | 1.4 | **装饰装修工程** | 542d | 2014-05-05 | 2015-11-20 |  | 11d |  |
| 92 | 1.4.1 | **一施工段（3、7#楼）** | 277d | 2014-12-13 | 2015-10-08 |  | 46d |  |
| 93 | 1.4.1.1 | 土方回填 | 30d | 2014-12-28 | 2015-01-26 | 29 | 263d | 0d |
| 94 | 1.4.1.2 | 落水管安装 | 24d | 2015-07-19 | 2015-08-11 | 70FS+90d | 104d |  |
| 95 | 1.4.1.3 | 室内外防水工程 | 40d | 2015-01-02 | 2015-02-10 | 93SS+5d | 263d |  |
| 96 | 1.4.1.4 | 抹灰工程 | 90d | 2014-12-13 | 2015-04-04 | 36SS | 133d | 0d |
| 97 | 1.4.1.5 | 楼地面、公共部分墙面及厨房、卫生间贴砖工程 | 90d | 2015-01-29 | 2015-05-21 | 37FS+2d | 0d |  |
| 98 | 1.4.1.6 | 楼门、防火门、进户三防门、户内门安装 | 30d | 2015-05-10 | 2015-06-08 | 96FS+35d | 133d | 0d |
| 99 | 1.4.1.7 | 爬梯、玻璃雨棚、扶手栏杆制安 | 30d | 2015-06-14 | 2015-07-13 | 98FS+5d | 133d |  |
| 100 | 1.4.1.8 | 外墙保温工程 | 100d | 2015-02-07 | 2015-06-09 | 37FS+11d | 132d | 0d |
| 101 | 1.4.1.9 | 外墙涂料工程 | 60d | 2015-05-07 | 2015-07-05 | 35FS+122d | 141d |  |
| 102 | 1.4.1.10 | 外墙面砖 | 30d | 2015-06-15 | 2015-07-14 | 100FS+5d | 132d |  |
| 103 | 1.4.1.11 | 内保温工程 | 25d | 2015-01-12 | 2015-02-05 | 37FF+10d | 268d |  |
| 104 | 1.4.1.12 | 油漆涂料工程 | 70d | 2015-05-22 | 2015-07-30 | 97 | 0d |  |
| 105 | 1.4.1.13 | 电梯安装 | 60d | 2015-07-31 | 2015-09-28 | 104 | 0d |  |
| 106 | 1.4.1.14 | 室外工程 | 60d | 2015-08-10 | 2015-10-08 | 105SS+10d | 46d |  |
| 107 | 1.4.2 | **二施工段（11#楼）** | 193d | 2015-05-12 | 2015-11-20 |  | 11d |  |
| 108 | 1.4.2.1 | 土方回填 | 50d | 2015-06-01 | 2015-07-20 | 51FS+30d | 134d |  |
| 109 | 1.4.2.2 | 落水斗安装 | 25d | 2015-10-10 | 2015-11-03 | 77FS+120d | 28d |  |
| 110 | 1.4.2.3 | 室内外防水工程 | 40d | 2015-05-22 | 2015-06-30 | 51SS+40d | 154d |  |
| 111 | 1.4.2.4 | 抹灰工程 | 90d | 2015-05-12 | 2015-08-09 | 51SS+30d | 14d | 0d |
| 112 | 1.4.2.5 | 楼地面、公共部分墙面及厨房、卫生间贴砖工程 | 90d | 2015-06-11 | 2015-09-08 | 111SS+30d | 14d | 0d |
| 113 | 1.4.2.6 | 楼门、防火门、进户三防门、户内门安装 | 30d | 2015-06-06 | 2015-07-05 | 111SS+25d | 97d | 0d |
| 114 | 1.4.2.7 | 爬梯、玻璃雨棚、扶手栏杆制安 | 40d | 2015-07-18 | 2015-08-26 | 113FS+12d | 97d |  |
| 115 | 1.4.2.8 | 内保温工程 | 15d | 2015-05-22 | 2015-06-05 | 111SS+10d | 179d |  |
| 116 | 1.4.2.9 | 外墙保温工程 | 60d | 2015-06-27 | 2015-08-25 | 111SS+46d | 58d | 0d |
| 117 | 1.4.2.10 | 外墙涂料工程 | 70d | 2015-07-27 | 2015-10-04 | 116SS+30d | 58d |  |
| 118 | 1.4.2.11 | 油漆涂料工程 | 80d | 2015-07-11 | 2015-09-28 | 112SS+30d | 14d | 0d |
| 119 | 1.4.2.12 | 电梯安装 | 60d | 2015-08-30 | 2015-10-28 | 105SS+30d | 0d |  |
| 120 | 1.4.2.13 | 室外工程 | 60d | 2015-09-22 | 2015-11-20 | 119SS+23d | 0d |  |

| ID | WBS | Task | Duration | Start | Finish | Predecessors | Total slack | Free slack |
| --- | --- | --- | --- | --- | --- | --- | --- | --- |
| 121 | 1.4.3 | **三施工段（41#楼工程）** | 230d | 2014-05-05 | 2014-12-20 |  | 315d |  |
| 122 | 1.4.3.1 | 土方回填 | 5d | 2014-05-05 | 2014-05-09 | 56 | 470d | 0d |
| 123 | 1.4.3.2 | 落水管安装 | 10d | 2014-10-02 | 2014-10-11 | 60FS+90d | 385d |  |
| 124 | 1.4.3.3 | 防水工程 | 20d | 2014-06-29 | 2014-07-18 | 122FS+50d | 470d |  |
| 125 | 1.4.3.4 | 抹灰工程 | 30d | 2014-07-04 | 2014-08-02 | 60 | 300d | 0d |
| 126 | 1.4.3.5 | 楼内贴砖工程 | 30d | 2014-09-27 | 2014-10-26 | 125FS+55d | 325d | 0d |
| 127 | 1.4.3.6 | 楼门、进户三防门、户内门安装 | 20d | 2014-10-27 | 2014-11-15 | 126 | 325d | 0d |
| 128 | 1.4.3.7 | 爬梯、玻璃雨棚、扶手栏杆制安 | 25d | 2014-11-16 | 2014-12-10 | 127 | 325d |  |
| 129 | 1.4.3.8 | 外墙保温工程 | 30d | 2014-08-03 | 2014-09-01 | 125 | 300d | 0d |
| 130 | 1.4.3.9 | 外墙装饰工程 | 30d | 2014-09-02 | 2014-10-01 | 129 | 300d | 0d |
| 131 | 1.4.3.10 | 油漆涂料工程 | 30d | 2014-10-02 | 2014-10-31 | 130 | 300d | 0d |
| 132 | 1.4.3.11 | 室外工程 | 50d | 2014-11-01 | 2014-12-20 | 131 | 315d |  |
| 133 | 1.4.4 | **四施工段（地下车库工程）** | 160d | 2014-12-05 | 2015-06-05 |  | 158d |  |
| 134 | 1.4.4.1 | 室内土方回填 | 60d | 2014-12-05 | 2015-02-02 | 85SS+20d | 158d | 0d |
| 135 | 1.4.4.2 | 地沟施工 | 30d | 2015-03-18 | 2015-04-16 | 88SS+5d | 221d |  |
| 136 | 1.4.4.3 | 抹灰工程 | 60d | 2014-12-30 | 2015-03-22 | 62FS+30d | 246d |  |
| 137 | 1.4.4.4 | 楼地面工程 | 100d | 2015-02-03 | 2015-06-05 | 134 | 158d | 0d |
| 138 | 1.4.4.5 | 门窗制作与安装工程 | 30d | 2015-03-28 | 2015-04-26 | 137SS+30d | 211d |  |
| 139 | 1.4.4.6 | 防水工程 | 15d | 2015-02-08 | 2015-03-17 | 134FS+5d | 231d | 0d |
| 140 | 1.4.4.7 | 外墙涂料 | 20d | 2015-03-18 | 2015-04-06 | 139 | 231d |  |
| 141 | 1.4.4.8 | 卫生间块料墙地面及隔断 | 30d | 2015-03-13 | 2015-04-11 | 137SS+15d | 158d | 0d |
| 142 | 1.4.4.9 | 油漆与涂料工程 | 30d | 2015-04-12 | 2015-05-11 | 141 | 158d | 0d |
| 143 | 1.4.4.10 | 装饰板墙施工 | 30d | 2015-03-23 | 2015-04-21 | 141SS+10d | 201d | 0d |
| 144 | 1.4.4.11 | 其它零星工程 | 15d | 2015-04-22 | 2015-05-06 | 143 | 201d |  |

| ID | WBS | Task | Duration | Start | Finish | Predecessors | Total slack | Free slack | Work |
| --- | --- | --- | --- | --- | --- | --- | --- | --- | --- |
| 145 | 1.5 | **水、电、暖、通、消防安装工程（含预埋）** | 598d | 2014-03-21 | 2015-12-01 |  | 0d |  | 240h |
| 146 | 1.5.1 | **一施工段（3、7#楼）** | 529d | 2014-03-21 | 2015-09-23 |  | 69d |  |  |
| 147 | 1.5.1.1 | 水、电安装预埋工程 | 310d | 2014-03-21 | 2015-01-24 | 6SS+15d | 288d |  |  |
| 148 | 1.5.1.2 | 水、电安装二次预埋配管 | 120d | 2014-10-25 | 2015-03-16 | 33SS+11d | 102d | 0d |  |
| 149 | 1.5.1.3 | 配电箱、桥架安装 | 100d | 2014-12-14 | 2015-04-15 | 148SS+50d | 162d | 0d |  |
| 150 | 1.5.1.4 | 强弱电穿配线、电缆敷设 | 60d | 2015-04-16 | 2015-06-14 | 149FF+60d | 162d |  |  |
| 151 | 1.5.1.5 | 给、排、消防主管道敷设 | 90d | 2014-11-24 | 2015-03-16 | 148SS+30d | 102d | 0d |  |
| 152 | 1.5.1.6 | 给、排、消防支管道、阀门、暖气片、仪表安装 | 90d | 2015-01-13 | 2015-05-05 | 151SS+50d | 102d | 0d |  |
| 153 | 1.5.1.7 | 消火栓、喷淋安装 | 30d | 2015-05-06 | 2015-06-04 | 152 | 102d | 0d |  |
| 154 | 1.5.1.8 | 户内开关、面板、插座、灯具安装 | 60d | 2015-06-21 | 2015-08-19 | 104SS+30d | 61d | 0d |  |
| 155 | 1.5.1.9 | 卫生洁具安装 | 60d | 2015-07-11 | 2015-09-08 | 154SS+20d | 61d | 0d |  |
| 156 | 1.5.1.10 | 风口、风管、风阀及设备安装 | 60d | 2015-06-15 | 2015-08-13 | 153FS+10d | 102d |  |  |
| 157 | 1.5.1.11 | 水、电、暖、通、消防检测调试 | 15d | 2015-09-09 | 2015-09-23 | 155 | 61d |  |  |
| 158 | 1.5.2 | **二施工段（11#楼工程）** | 554d | 2014-04-20 | 2015-11-17 |  | 14d |  |  |
| 159 | 1.5.2.1 | 水、电安装预埋工程 | 290d | 2014-04-20 | 2015-02-03 | 11SS+15d | 278d |  |  |
| 160 | 1.5.2.2 | 水、电安装二次预埋配管 | 140d | 2015-02-08 | 2015-07-20 | 48 | 39d | 0d |  |
| 161 | 1.5.2.3 | 配电箱、桥架安装 | 90d | 2015-04-24 | 2015-07-22 | 160SS+52d | 74d | 0d |  |
| 162 | 1.5.2.4 | 强弱电穿配线、电缆敷设 | 60d | 2015-07-13 | 2015-09-10 | 161FF+50d | 74d |  |  |
| 163 | 1.5.2.5 | 给、排、消防主管道敷设 | 90d | 2015-03-20 | 2015-06-17 | 160SS+17d | 39d | 0d |  |
| 164 | 1.5.2.6 | 给、排、消防支管道、阀门、暖气片、仪表安装 | 90d | 2015-04-19 | 2015-07-17 | 163SS+30d | 39d | 0d |  |
| 165 | 1.5.2.7 | 消火栓安装 | 30d | 2015-07-18 | 2015-08-16 | 164 | 39d | 0d |  |
| 166 | 1.5.2.8 | 户内开关、面板、插座、灯具安装 | 60d | 2015-08-20 | 2015-10-18 | 118SS+40d | 6d | 0d |  |
| 167 | 1.5.2.9 | 卫生洁具安装 | 60d | 2015-09-04 | 2015-11-02 | 166SS+15d | 6d | 0d |  |
| 168 | 1.5.2.10 | 风管、风口、风阀及设备安装 | 60d | 2015-08-17 | 2015-10-15 | 165 | 39d |  |  |
| 169 | 1.5.2.11 | 水、电、暖、通、消防检测调试 | 15d | 2015-11-03 | 2015-11-17 | 167 | 6d |  |  |

| ID | WBS | Task | Duration | Start | Finish | Predecessors | Total slack | Free slack | Constraint | Work |
| --- | --- | --- | --- | --- | --- | --- | --- | --- | --- | --- |
| 170 | 1.5.3 | **三施工段（41#楼工程）** | 290d | 2014-03-21 | 2015-01-04 |  | 308d |  |  |  |
| 171 | 1.5.3.1 | 水、电安装预埋工程 | 95d | 2014-03-21 | 2014-06-23 | 16SS+15d | 503d |  |  |  |
| 172 | 1.5.3.2 | 水、电安装二次预埋配管 | 50d | 2014-07-04 | 2014-08-22 | 60 | 365d | 0d |  |  |
| 173 | 1.5.3.3 | 配电箱、桥架安装 | 30d | 2014-08-13 | 2014-09-11 | 172SS+40d | 365d | 0d |  |  |
| 174 | 1.5.3.4 | 强弱电穿配线、电缆敷设 | 15d | 2014-09-22 | 2014-10-06 | 173FF+25d | 390d |  |  |  |
| 175 | 1.5.3.5 | 给、排、消防主管道敷设 | 30d | 2014-08-23 | 2014-09-21 | 173SS+10d | 365d | 0d |  |  |
| 176 | 1.5.3.6 | 给、排、消防支管道、阀门、暖气片、仪表安装 | 30d | 2014-09-22 | 2014-10-21 | 175 | 365d | 0d |  |  |
| 177 | 1.5.3.7 | 消火栓、喷淋安装 | 10d | 2014-10-22 | 2014-10-31 | 176 | 365d |  |  |  |
| 178 | 1.5.3.8 | 户内开关、面板、插座、灯具安装 | 30d | 2014-11-11 | 2014-12-10 | 131SS+40d | 300d | 0d |  |  |
| 179 | 1.5.3.9 | 卫生洁具安装 | 20d | 2014-11-21 | 2014-12-10 | 178SS+10d | 325d |  |  |  |
| 180 | 1.5.3.10 | 风管、风口、风阀及设备安装 | 20d | 2014-12-01 | 2014-12-20 | 178SS+20d | 315d |  |  |  |
| 181 | 1.5.3.11 | 水、电、暖、通、消防检测调试 | 10d | 2014-12-26 | 2015-01-04 | 178SS+45d | 300d |  |  |  |
| 182 | 1.5.4 | **四施工段（地下车库工程）** | 423d | 2014-04-04 | 2015-06-23 |  | 153d |  |  |  |
| 183 | 1.5.4.1 | 水、电安装预埋工程 | 200d | 2014-04-04 | 2014-10-20 | 20SS+15d | 376d |  |  |  |
| 184 | 1.5.4.2 | 水、电安装二次预埋配管 | 30d | 2014-11-30 | 2014-12-29 | 62 | 241d | 0d |  |  |
| 185 | 1.5.4.3 | 配电箱、桥架安装 | 15d | 2014-12-30 | 2015-01-13 | 184 | 241d | 0d |  |  |
| 186 | 1.5.4.4 | 强弱电穿配线、电缆敷设 | 10d | 2015-01-19 | 2015-01-28 | 185FF+15d | 276d |  |  |  |
| 187 | 1.5.4.5 | 给、排、消防主管道敷设 | 15d | 2015-04-27 | 2015-05-11 | 142SS+15d | 176d | 0d |  |  |
| 188 | 1.5.4.6 | 给、排、消防支管道、阀门、仪表、暖气片安装 | 10d | 2015-05-12 | 2015-05-21 | 187 | 176d | 0d |  |  |
| 189 | 1.5.4.7 | 消火栓、喷淋、消防泵房安装 | 10d | 2015-05-22 | 2015-05-31 | 188 | 176d |  |  |  |
| 190 | 1.5.4.8 | 开关、面板、插座、灯具安装 | 13d | 2015-05-12 | 2015-05-24 | 142SS+30d | 158d | 0d |  |  |
| 191 | 1.5.4.9 | 风管、风口、风阀及设备安装 | 15d | 2015-05-25 | 2015-06-08 | 190 | 158d | 0d |  |  |
| 192 | 1.5.4.10 | 卫生洁具安装 | 5d | 2015-06-09 | 2015-06-13 | 191 | 153d | 0d |  |  |
| 193 | 1.5.4.11 | 水、电、暖、通、消防检测调试 | 10d | 2015-06-14 | 2015-06-23 | 192 | 153d |  |  |  |
| 194 | 1.5.5 | 收尾工作 | 10d | 2015-11-21 | 2015-11-30 | 120 | 0d |  |  |  |
| 195 | 1.5.6 | 竣工验收 | 1d | 2015-12-01 | 2015-12-01 | 194 | 0d |  | start no earlier than 2015-12-01 | 240h |
